# Slappy Games-Gantt_Chart-8_07_04

How a schedule from MS Project changed from version to version. A marks actual dates.

## Version 1 (saved 2004-08-12, file Slappy Games-Gantt_Chart-8_10_04.mpp)

| ID | WBS | Task | Duration | Start | Finish | Predecessors | Complete | Total float | Constraint |
| --- | --- | --- | --- | --- | --- | --- | --- | --- | --- |
| 1 | 1 | **Super Pillow Fighter (Slappy Game)** | 87.38d? | 2004-06-30 A | 2004-09-25 |  | 25% | 0d |  |
| 2 | 1.1 | **Milestones** | 87.38d? | 2004-06-30 A | 2004-09-25 |  | 25% | 0d |  |
| 3 |  | Feature Frag #1 | 0.38d? | 2004-08-12 | 2004-08-12 |  |  | 44d | start no earlier than 2004-08-12 |
| 4 |  | Feature Frag #2 | 0.38d? | 2004-08-24 | 2004-08-24 |  |  | 32d | start no earlier than 2004-08-24 |
| 5 |  | Alpha | 0.38d? | 2004-09-02 | 2004-09-02 |  |  | 23d | start no earlier than 2004-09-02 |
| 6 |  | Beta | 0.38d? | 2004-09-16 | 2004-09-16 |  |  | 9d | start no earlier than 2004-09-16 |
| 7 |  | Final | 0.38d? | 2004-09-23 | 2004-09-23 |  |  | 2d | start no earlier than 2004-09-23 |
| 8 |  | Archive | 0.38d? | 2004-09-25 | 2004-09-25 |  |  | 0d | start no earlier than 2004-09-25 |
| 9 | 1.1.7 | **Programming** | 56.62d? | 2004-07-25 A | 2004-09-20 |  | 19% | 5.38d |  |
| 10 | 1.1.7.1 | **Rendering** | 51d? | 2004-07-25 A | 2004-09-14 |  | 19% | 11d |  |
| 11 |  | Planning | 7d | 2004-07-25 A | 2004-08-01 A |  | 100% |  | finish no earlier than 2004-08-01 |
| 12 |  | Vertex Transforms | 2.38d | 2004-08-14 | 2004-08-16 |  |  | 36d | start no earlier than 2004-08-14 |
| 13 |  | Sorting | 4d | 2004-08-16 | 2004-08-20 | 12 |  | 36d |  |
| 14 |  | Texturing | 4d | 2004-08-21 | 2004-08-25 |  |  | 26.38d | start no earlier than 2004-08-21 |
| 15 |  | Lighting | 5d | 2004-08-25 | 2004-08-30 | 14 |  | 26.38d |  |
| 16 |  | Camera | 3.38d | 2004-08-28 | 2004-08-31 |  |  | 25d | start no earlier than 2004-08-28 |
| 17 | 1.1.7.1.7 | **Effects** | 12.38d? | 2004-09-02 | 2004-09-14 |  |  | 11d |  |
| 18 |  | Water | 3d | 2004-09-02 | 2004-09-05 |  |  | 20.38d | start no earlier than 2004-09-02 |
| 19 | 1.1.7.1.7.2 | **Shadows** | 7.38d? | 2004-09-05 | 2004-09-12 |  |  | 13d |  |
| 20 |  | Generate Shadow Texture | 2.38d? | 2004-09-05 | 2004-09-07 |  |  | 18d | finish no earlier than 2004-09-07 |
| 21 |  | Apply Shadow Texture | 3.38d? | 2004-09-09 | 2004-09-12 |  |  | 13d | finish no earlier than 2004-09-12 |
| 22 |  | Backgrounds | 2.38d | 2004-09-12 | 2004-09-14 |  |  | 11d | finish no earlier than 2004-09-14 |
| 23 | 1.1.7.2 | **Level Manager** | 12d | 2004-08-07 | 2004-08-19 |  |  | 37.38d |  |
| 24 |  | Planning | 4d | 2004-08-07 | 2004-08-11 |  |  | 37.38d | start no earlier than 2004-08-07 |
| 25 |  | Implement | 4d | 2004-08-11 | 2004-08-15 | 24 |  | 37.38d | start no earlier than 2004-08-11 |
| 26 |  | Test | 4d | 2004-08-15 | 2004-08-19 | 25 |  | 37.38d | start no earlier than 2004-08-15 |
| 27 | 1.1.7.3 | **Bitmap Manager** | 2d | 2004-08-02 A | 2004-08-04 A |  | 100% |  |  |
| 28 |  | Planning | 2d | 2004-08-02 A | 2004-08-04 A |  | 100% |  | start no earlier than 2004-08-02 |
| 29 |  | Implement | 1d | 2004-08-03 A | 2004-08-04 A |  | 100% |  | start no earlier than 2004-08-03 |
| 30 |  | Test | 1d | 2004-08-03 A | 2004-08-04 A |  | 100% |  | start no earlier than 2004-08-03 |
| 31 | 1.1.7.4 | **Physics** | 23.29d | 2004-08-04 A | 2004-08-27 |  | 13% | 29.09d |  |
| 32 |  | Research | 2d | 2004-08-04 A | 2004-08-06 A |  | 100% |  | start no earlier than 2004-08-04 |
| 33 |  | Implement Forces and Movement | 3d | 2004-08-11 A | 2004-08-14 | 32 | 13% | 29.09d |  |
| 34 |  | Implement Collision Detection Algorithm | 1d | 2004-08-14 | 2004-08-15 | 33 |  | 29.09d | start no earlier than 2004-08-08 |
| 35 | 1.1.7.4.4 | **Event Handler** | 12d | 2004-08-15 | 2004-08-27 | 34 |  | 29.09d |  |
| 36 |  | Basic Collision Responses | 5d | 2004-08-15 | 2004-08-20 |  |  | 29.09d | start no earlier than 2004-08-11 |
| 37 |  | Advance Collision Responses | 5d | 2004-08-20 | 2004-08-25 | 36 |  | 29.09d | start no earlier than 2004-08-17 |
| 38 |  | Unit Testing | 2d | 2004-08-25 | 2004-08-27 | 37 |  | 29.09d |  |
| 39 | 1.1.7.5 | **AI** | 23d | 2004-08-18 | 2004-09-10 |  |  | 15.38d |  |
| 40 |  | AI state change / basic functionality | 5d | 2004-08-18 | 2004-08-23 |  |  | 25.38d | start no earlier than 2004-08-18 |
| 41 |  | AI move/attempt to accomplish goals | 5d | 2004-09-02 | 2004-09-07 | 40 |  | 15.38d | start no earlier than 2004-09-02 |
| 42 |  | AI testing / debugging | 3d | 2004-09-07 | 2004-09-10 | 41 |  | 15.38d |  |
| 43 | 1.1.7.6 | **HUD** | 15d | 2004-08-14 | 2004-08-29 |  |  | 27.38d |  |
| 44 |  | Basic Hud / Bitmapped Fonts | 4d | 2004-08-14 | 2004-08-18 |  |  | 38.38d | start no earlier than 2004-08-14 |
| 45 |  | Hud Complete | 2d | 2004-08-25 | 2004-08-27 |  |  | 27.38d | start no earlier than 2004-08-25 |
| 46 |  | Hud Testing | 2d | 2004-08-27 | 2004-08-29 | 45 |  | 27.38d | start no earlier than 2004-08-18 |
| 47 |  | Paused HUD | 1d | 2004-08-24 | 2004-08-25 |  |  | 31.38d | start no earlier than 2004-08-24 |
| 48 | 1.1.7.7 | **Menu** | 21d | 2004-08-12 A | 2004-09-02 |  | 6% | 23.38d |  |
| 49 |  | Basic Menu | 2d | 2004-08-12 A | 2004-08-14 |  | 19% | 38.38d | start no earlier than 2004-08-12 |
| 50 |  | Complete Menu | 3d | 2004-08-29 | 2004-09-01 | 49 |  | 23.38d | start no earlier than 2004-08-29 |
| 51 |  | Menu Testing w/ Other Modules | 1d | 2004-09-01 | 2004-09-02 | 50 |  | 23.38d | start no earlier than 2004-08-18 |
| 52 | 1.1.7.8 | **Input** | 7d | 2004-08-04 A | 2004-08-11 |  | 69% | 45.38d |  |
| 53 |  | Basic Input | 2.38d | 2004-08-04 A | 2004-08-06 A |  | 100% |  | finish no earlier than 2004-08-06 |
| 54 |  | Input with Action functionality | 3d | 2004-08-06 A | 2004-08-09 | 53 | 67% | 45.99d | start no earlier than 2004-08-05 |
| 55 |  | Testing Input | 1d | 2004-08-10 | 2004-08-11 | 54 |  | 45.38d | start no earlier than 2004-08-10 |
| 56 | 1.1.7.9 | **Content Exporter/Loader** | 21d? | 2004-08-05 A | 2004-08-26 |  | 11% | 30.38d |  |
| 57 | 1.1.7.9.1 | **Geometery** | 10d | 2004-08-12 | 2004-08-22 |  |  | 34.38d |  |
| 58 | 1.1.7.9.1.1 | **Exporter** | 10d | 2004-08-12 | 2004-08-22 |  |  | 34.38d |  |
| 59 |  | Implementation | 5d | 2004-08-12 | 2004-08-17 |  |  | 39.38d | start no earlier than 2004-08-12 |
| 60 |  | Testing | 5d | 2004-08-17 | 2004-08-22 |  |  | 34.38d | start no earlier than 2004-08-17 |
| 61 | 1.1.7.9.1.2 | **Importer** | 10d | 2004-08-12 | 2004-08-22 |  |  | 34.38d |  |
| 62 |  | Implemnetation | 5d | 2004-08-12 | 2004-08-17 |  |  | 39.38d | start no earlier than 2004-08-12 |
| 63 |  | Testing | 5d | 2004-08-17 | 2004-08-22 |  |  | 34.38d | start no earlier than 2004-08-17 |
| 64 | 1.1.7.9.2 | **Animation** | 21d? | 2004-08-05 A | 2004-08-26 |  | 21% | 30.38d |  |
| 65 | 1.1.7.9.2.1 | **Exporter** | 10.76d? | 2004-08-05 A | 2004-08-16 |  | 41% | 30.62d |  |
| 66 |  | Research | 4.38d? | 2004-08-05 A | 2004-08-09 A |  | 100% |  | start no earlier than 2004-08-05 |
| 67 |  | Implementation | 4.38d? | 2004-08-09 | 2004-08-14 | 66 |  | 30.62d | finish no earlier than 2004-08-08 |
| 68 |  | Unit Testing | 2d | 2004-08-14 | 2004-08-16 | 67 |  | 30.62d | finish no earlier than 2004-08-13 |
| 69 | 1.1.7.9.2.2 | **Loader** | 10.24d | 2004-08-16 | 2004-08-26 | 68 |  | 30.38d |  |
| 70 |  | Research | 3d | 2004-08-16 | 2004-08-19 |  |  | 30.62d |  |

| ID | WBS | Task | Duration | Start | Finish | Predecessors | Complete | Total float | Constraint |
| --- | --- | --- | --- | --- | --- | --- | --- | --- | --- |
| 71 |  | Implementation | 5d | 2004-08-19 | 2004-08-24 | 70 |  | 30.62d |  |
| 72 |  | Unit Testing | 2d | 2004-08-24 | 2004-08-26 | 71 |  | 30.38d | start no earlier than 2004-08-24 |
| 73 | 1.1.7.10 | **Animation** | 12.12d? | 2004-08-26 | 2004-09-07 |  |  | 18.25d |  |
| 74 | 1.1.7.10.1 | **Keyframe** | 12.12d? | 2004-08-26 | 2004-09-07 |  |  | 18.25d |  |
| 75 |  | Research | 4.38d? | 2004-08-26 | 2004-08-30 |  |  | 18.25d | start no earlier than 2004-08-26 |
| 76 |  | Implementation | 4.38d? | 2004-08-30 | 2004-09-04 | 75 |  | 18.25d | finish no earlier than 2004-08-08 |
| 77 |  | Unit Testing | 3.38d? | 2004-09-04 | 2004-09-07 | 76 |  | 18.25d | start no earlier than 2004-08-09 |
| 78 | 1.1.7.10.2 | **Interperlation** | 12.12d? | 2004-08-26 | 2004-09-07 |  |  | 18.25d |  |
| 79 |  | Research | 4.38d? | 2004-08-26 | 2004-08-30 |  |  | 18.25d | start no earlier than 2004-08-26 |
| 80 |  | Implementation | 4.38d? | 2004-08-30 | 2004-09-04 | 79 |  | 18.25d | finish no earlier than 2004-08-22 |
| 81 |  | Unit Testing | 3.38d? | 2004-09-04 | 2004-09-07 | 80 |  | 18.25d | start no earlier than 2004-08-23 |
| 82 |  | Memory Manager | 2d | 2004-08-06 A | 2004-08-08 A |  | 100% |  | start no earlier than 2004-08-06 |
| 83 | 1.1.7.12 | **Base Objects** | 6.38d | 2004-08-06 A | 2004-08-12 |  | 77% | 44d |  |
| 84 | 1.1.7.12.1 | **Base Object** | 6.38d | 2004-08-06 A | 2004-08-12 A |  | 100% |  |  |
| 85 |  | Planning | 4d | 2004-08-06 A | 2004-08-10 A |  | 100% |  | start no earlier than 2004-08-06 |
| 86 |  | Implement | 2d | 2004-08-10 A | 2004-08-12 A |  | 100% |  | finish no earlier than 2004-08-12 |
| 87 | 1.1.7.12.2 | **Pillow** | 6d | 2004-08-06 A | 2004-08-12 |  | 67% | 44.38d |  |
| 88 |  | Planning | 4d | 2004-08-06 A | 2004-08-10 A |  | 100% |  | start no earlier than 2004-08-06 |
| 89 |  | Implement | 2d | 2004-08-10 | 2004-08-12 |  |  | 44.38d | start no earlier than 2004-08-10 |
| 90 | 1.1.7.12.3 | **Player** | 6d | 2004-08-06 A | 2004-08-12 |  | 73% | 44.38d |  |
| 91 |  | Planning | 4d | 2004-08-06 A | 2004-08-10 A |  | 100% |  | start no earlier than 2004-08-06 |
| 92 |  | Implement | 2d | 2004-08-10 A | 2004-08-12 |  | 19% | 44.38d | start no earlier than 2004-08-10 |
| 93 | 1.1.7.12.4 | **PowerUp** | 6d | 2004-08-06 A | 2004-08-12 |  | 67% | 44.38d |  |
| 94 |  | Planning | 4d | 2004-08-06 A | 2004-08-10 A |  | 100% |  | start no earlier than 2004-08-06 |
| 95 |  | Implement | 2d | 2004-08-10 | 2004-08-12 |  |  | 44.38d | start no earlier than 2004-08-10 |
| 96 | 1.1.7.13 | **Game Manager** | 7d | 2004-08-20 | 2004-08-27 |  |  | 29.38d |  |
| 97 |  | Planning | 1d | 2004-08-20 | 2004-08-21 |  |  | 35.38d | start no earlier than 2004-08-20 |
| 98 |  | Implement | 5.38d | 2004-08-21 | 2004-08-26 |  |  | 30d | start no earlier than 2004-08-21 |
| 99 |  | Testing | 1d | 2004-08-26 | 2004-08-27 |  |  | 29.38d | start no earlier than 2004-08-26 |
| 100 |  | Profiler | 1d | 2004-08-27 | 2004-08-28 |  |  | 28.38d | start no earlier than 2004-08-27 |
| 101 |  | Logger | 1d | 2004-08-07 A | 2004-08-08 A |  | 100% |  | start no earlier than 2004-08-07 |
| 102 | 1.1.7.16 | **Sound** | 11d | 2004-09-03 | 2004-09-14 |  |  | 11.38d |  |
| 103 |  | Sound FX | 2d | 2004-09-03 | 2004-09-05 |  |  | 20.38d | start no earlier than 2004-09-03 |
| 104 | 1.1.7.16.2 | **Music** | 7d | 2004-09-07 | 2004-09-14 |  |  | 11.38d |  |
| 105 |  | Research | 2d | 2004-09-07 | 2004-09-09 |  |  | 16.38d | start no earlier than 2004-09-07 |
| 106 |  | Planning | 2d | 2004-09-08 | 2004-09-10 |  |  | 15.38d | start no earlier than 2004-09-08 |
| 107 |  | Implement | 4d | 2004-09-10 | 2004-09-14 |  |  | 11.38d | start no earlier than 2004-09-10 |
| 108 | 1.1.7.17 | **Object Manager** | 7d | 2004-08-12 | 2004-08-19 |  |  | 37.38d |  |
| 109 |  | Planning | 1d | 2004-08-12 | 2004-08-13 |  |  | 43.38d | start no earlier than 2004-08-12 |
| 110 |  | Implement | 4d | 2004-08-13 | 2004-08-17 |  |  | 39.38d | start no earlier than 2004-08-13 |
| 111 |  | Test | 1d | 2004-08-18 | 2004-08-19 |  |  | 37.38d | start no earlier than 2004-08-18 |
| 112 | 1.1.7.18 | **Particle** | 5d | 2004-08-27 | 2004-09-01 |  |  | 24.38d |  |
| 113 |  | Research | 2d | 2004-08-27 | 2004-08-29 |  |  | 27.38d | start no earlier than 2004-08-27 |
| 114 |  | Planning | 2d | 2004-08-27 | 2004-08-29 |  |  | 27.38d | start no earlier than 2004-08-27 |
| 115 |  | Implement | 2d | 2004-08-30 | 2004-09-01 |  |  | 24.38d | start no earlier than 2004-08-30 |
| 116 | 1.1.7.19 | **Window Installer** | 4d | 2004-09-16 | 2004-09-20 |  |  | 5.38d |  |
| 117 |  | Research | 2d | 2004-09-16 | 2004-09-18 |  |  | 7.38d | start no earlier than 2004-09-16 |
| 118 |  | Implement | 2d | 2004-09-18 | 2004-09-20 |  |  | 5.38d | start no earlier than 2004-09-18 |
| 119 | 1.1.8 | **Assets** | 54d | 2004-06-30 | 2004-08-23 |  |  | 33.38d |  |
| 120 | 1.1.8.1 | **2D ART** | 11d | 2004-08-10 | 2004-08-21 |  |  | 35.38d |  |
| 121 | 1.1.8.1.1 | **Menu** | 0d | 2004-08-13 | 2004-08-13 |  |  | 43.38d |  |
| 122 | 1.1.8.1.1.1 | **Front End Menu** | 0d | 2004-08-13 | 2004-08-13 |  |  | 43.38d |  |
| 123 |  | Mini picture of each level | 0d | 2004-08-13 | 2004-08-13 |  |  | 43.38d | start no earlier than 2004-08-13 |
| 124 |  | 2 pillow picturees (fluffed/squished) | 0d | 2004-08-13 | 2004-08-13 |  |  | 43.38d | start no earlier than 2004-08-13 |
| 125 |  | Picture of Josie And Sally Fighting | 0d | 2004-08-13 | 2004-08-13 |  |  | 43.38d | start no earlier than 2004-08-13 |
| 126 |  | BackGround of Level/Character Select | 0d | 2004-08-13 | 2004-08-13 |  |  | 43.38d | start no earlier than 2004-08-13 |
| 127 |  | BackGround picture of Rubber Ducky | 0d | 2004-08-13 | 2004-08-13 |  |  | 43.38d | start no earlier than 2004-08-13 |
| 128 | 1.1.8.1.2 | **HUD** | 2d | 2004-08-10 | 2004-08-12 |  |  | 44.38d |  |
| 129 |  | Picture of Characters | 0d | 2004-08-12 | 2004-08-12 |  |  | 44.38d | start no earlier than 2004-08-12 |
| 130 |  | Fonts | 0d | 2004-08-10 | 2004-08-10 |  |  | 46.38d | start no earlier than 2004-08-10 |
| 131 | 1.1.8.1.3 | **Particle Texture** | 4d | 2004-08-17 | 2004-08-21 |  |  | 35.38d |  |
| 132 |  | Feather | 0d | 2004-08-17 | 2004-08-17 |  |  | 39.38d | start no earlier than 2004-08-17 |
| 133 |  | Cloud Puff | 0d | 2004-08-21 | 2004-08-21 |  |  | 35.38d | start no earlier than 2004-08-21 |
| 134 |  | 3 Sparkles | 0d | 2004-08-19 | 2004-08-19 |  |  | 37.38d | start no earlier than 2004-08-19 |
| 135 |  | Cloud Trail | 0d | 2004-08-18 | 2004-08-18 |  |  | 38.38d | start no earlier than 2004-08-18 |
| 136 |  | Water Splash | 0d | 2004-08-20 | 2004-08-20 |  |  | 36.38d | start no earlier than 2004-08-20 |
| 137 |  | White Glob | 0d | 2004-08-20 | 2004-08-20 |  |  | 36.38d | start no earlier than 2004-08-20 |
| 138 | 1.1.8.2 | **3D ART** | 6d | 2004-08-17 | 2004-08-23 |  |  | 33.38d |  |
| 139 | 1.1.8.2.1 | **Level Objects** | 3d | 2004-08-18 | 2004-08-21 |  |  | 35.38d |  |
| 140 |  | Pirate Boat | 0d | 2004-08-18 | 2004-08-18 |  |  | 38.38d | start no earlier than 2004-08-18 |

| ID | WBS | Task | Duration | Start | Finish | Complete | Total float | Constraint |
| --- | --- | --- | --- | --- | --- | --- | --- | --- |
| 141 |  | Whale | 0d | 2004-08-19 | 2004-08-19 |  | 37.38d | start no earlier than 2004-08-19 |
| 142 |  | Cannon | 0d | 2004-08-19 | 2004-08-19 |  | 37.38d | start no earlier than 2004-08-19 |
| 143 |  | Rubber Ducky | 0d | 2004-08-21 | 2004-08-21 |  | 35.38d | start no earlier than 2004-08-21 |
| 144 |  | Bar of Soap | 0d | 2004-08-21 | 2004-08-21 |  | 35.38d | start no earlier than 2004-08-21 |
| 145 |  | Faucet | 0d | 2004-08-21 | 2004-08-21 |  | 35.38d | start no earlier than 2004-08-21 |
| 146 |  | Water Gun Barrel | 0d | 2004-08-21 | 2004-08-21 |  | 35.38d | start no earlier than 2004-08-21 |
| 147 |  | Faucet Handles | 0d | 2004-08-21 | 2004-08-21 |  | 35.38d | start no earlier than 2004-08-21 |
| 148 | 1.1.8.2.2 | **Power Ups** | 3d | 2004-08-17 | 2004-08-20 |  | 36.38d |  |
| 149 |  | Pear | 0d | 2004-08-17 | 2004-08-17 |  | 39.38d | start no earlier than 2004-08-17 |
| 150 |  | Pineapple | 0d | 2004-08-20 | 2004-08-20 |  | 36.38d | start no earlier than 2004-08-20 |
| 151 |  | Grapes | 0d | 2004-08-20 | 2004-08-20 |  | 36.38d | start no earlier than 2004-08-20 |
| 152 |  | Ice Cream Cone | 0d | 2004-08-20 | 2004-08-20 |  | 36.38d | start no earlier than 2004-08-20 |
| 153 |  | Blueberry Pie | 0d | 2004-08-20 | 2004-08-20 |  | 36.38d | start no earlier than 2004-08-20 |
| 154 |  | Whole Turkey | 0d | 2004-08-20 | 2004-08-20 |  | 36.38d | start no earlier than 2004-08-20 |
| 155 | 1.1.8.2.3 | **Models** | 3d | 2004-08-20 | 2004-08-23 |  | 33.38d |  |
| 156 |  | Josie | 0d | 2004-08-20 | 2004-08-20 |  | 36.38d | start no earlier than 2004-08-20 |
| 157 |  | Captain Sally's Pillow | 0d | 2004-08-23 | 2004-08-23 |  | 33.38d | start no earlier than 2004-08-23 |
| 158 |  | Josie's Pillow | 0d | 2004-08-20 | 2004-08-20 |  | 36.38d | start no earlier than 2004-08-20 |
| 159 |  | Captain Sally's Pillow | 0d | 2004-08-23 | 2004-08-23 |  | 33.38d | start no earlier than 2004-08-23 |
| 160 | 1.1.8.3 | **Sound** | 0d | 2004-08-16 | 2004-08-16 |  | 40.38d |  |
| 161 | 1.1.8.3.1 | **Sound FX** | 0d | 2004-08-16 | 2004-08-16 |  | 40.38d |  |
| 162 |  | Wave/Ocean Noise | 0d | 2004-08-16 | 2004-08-16 |  | 40.38d | start no earlier than 2004-08-16 |
| 163 |  | Wood creaking | 0d | 2004-08-16 | 2004-08-16 |  | 40.38d | start no earlier than 2004-08-16 |
| 164 |  | Sail/Flag in the win | 0d | 2004-08-16 | 2004-08-16 |  | 40.38d | start no earlier than 2004-08-16 |
| 165 |  | Blow Hole Sound (geyser) | 0d | 2004-08-16 | 2004-08-16 |  | 40.38d | start no earlier than 2004-08-16 |
| 166 |  | Cannon Firing Sound | 0d | 2004-08-16 | 2004-08-16 |  | 40.38d | start no earlier than 2004-08-16 |
| 167 |  | Body hitting wood (clunk) | 0d | 2004-08-16 | 2004-08-16 |  | 40.38d | start no earlier than 2004-08-16 |
| 168 |  | a "ker-plunk" sound…body falling in water | 0d | 2004-08-16 | 2004-08-16 |  | 40.38d | start no earlier than 2004-08-16 |
| 169 |  | water running | 0d | 2004-08-16 | 2004-08-16 |  | 40.38d | start no earlier than 2004-08-16 |
| 170 |  | rubber ducky squeak | 0d | 2004-08-16 | 2004-08-16 |  | 40.38d | start no earlier than 2004-08-16 |
| 171 |  | Bubble sounds (popping) | 0d | 2004-08-16 | 2004-08-16 |  | 40.38d | start no earlier than 2004-08-16 |
| 172 |  | Squirt Gun Noise | 0d | 2004-08-16 | 2004-08-16 |  | 40.38d | start no earlier than 2004-08-16 |
| 173 |  | Quacking noise | 0d | 2004-08-16 | 2004-08-16 |  | 40.38d | start no earlier than 2004-08-16 |
| 174 |  | Soft Pillow sound (pillow impact on body) | 0d | 2004-08-16 | 2004-08-16 |  | 40.38d | start no earlier than 2004-08-16 |
| 175 |  | Hard Pillow Sound | 0d | 2004-08-16 | 2004-08-16 |  | 40.38d | start no earlier than 2004-08-16 |
| 176 |  | Item Pick Sound (bling, clink clink) | 0d | 2004-08-16 | 2004-08-16 |  | 40.38d | start no earlier than 2004-08-16 |
| 177 |  | Item Hitting bodd (splat sound) | 0d | 2004-08-16 | 2004-08-16 |  | 40.38d | start no earlier than 2004-08-16 |
| 178 |  | Powerup sound FX(REV noise) | 0d | 2004-08-16 | 2004-08-16 |  | 40.38d | start no earlier than 2004-08-16 |
| 179 | 1.1.8.3.2 | **Music** | 0d | 2004-08-16 | 2004-08-16 |  | 40.38d |  |
| 180 |  | Menu Loop | 0d | 2004-08-16 | 2004-08-16 |  | 40.38d | start no earlier than 2004-08-16 |
| 181 |  | Credit Loop | 0d | 2004-08-16 | 2004-08-16 |  | 40.38d | start no earlier than 2004-08-16 |
| 182 |  | Pirate Board loop | 0d | 2004-08-16 | 2004-08-16 |  | 40.38d | start no earlier than 2004-08-16 |
| 183 |  | Bathtub Board Loop | 0d | 2004-08-16 | 2004-08-16 |  | 40.38d | start no earlier than 2004-08-16 |
| 184 | 1.1.8.4 | **Voice Dialogue** | 0d | 2004-06-30 | 2004-06-30 |  | 87.38d |  |
| 185 |  | Josie | 0d | 2004-06-30 | 2004-06-30 |  | 87.38d |  |
| 186 |  | Captain Sally | 0d | 2004-06-30 | 2004-06-30 |  | 87.38d |  |
| 187 | 1.1.9 | **Design** | 34.38d? | 2004-06-30 A | 2004-08-03 | 58% | 53d |  |
| 188 |  | Tech Doc | 8.38d? | 2004-07-26 | 2004-08-03 |  | 53d | start no earlier than 2004-07-26 |
| 189 |  | Design Doc | 25.38d? | 2004-06-30 A | 2004-07-25 A | 100% |  | start no earlier than 2004-06-30 |
| 190 |  | Asset List | 10.38d? | 2004-07-20 | 2004-07-30 |  | 57d | finish no earlier than 2004-07-30 |

## Version 2 (saved 2004-08-26, file Slappy Games-Gantt_Chart-8_26_04.mpp)

Last finish stays 2004-09-25. Complete tasks 15 → 43.

Changed:

| ID | Task | Start | Finish | Duration | Complete | Total float | Predecessors | Other |
| --- | --- | --- | --- | --- | --- | --- | --- | --- |
| 1 | **Super Pillow Fighter (Slappy Game)** |  |  |  | 25% → 58% |  |  |  |
| 2 | **Milestones** |  |  |  | 25% → 58% |  |  |  |
| 9 | **Programming** |  |  |  | 19% → 58% |  |  |  |
| 10 | **Rendering** |  |  |  | 19% → 27% |  |  |  |
| 12 | Vertex Transforms | 2004-08-14 A | 2004-08-16 A |  | 0% → 100% | 36d → none |  |  |
| 13 | Sorting | 2004-08-16 → 2004-08-26 (+10d) | 2004-08-20 → 2004-08-30 (+10d) |  |  | 36d → 26.38d | 12 → none | constraint none → start no earlier than 2004-08-26 |
| 14 | Texturing | 2004-08-21 A | 2004-08-25 → 2004-09-01 (+7d) |  | 0% → 5% | 26.38d → 24.57d |  |  |
| 15 | Lighting | 2004-08-25 A | 2004-08-30 → 2004-09-05 (+6d) |  | 0% → 10% | 26.38d → 19.88d | 14 → none |  |
| 16 | Camera | 2004-08-28 → 2004-09-05 (+8d) | 2004-08-31 → 2004-09-08 (+8d) |  |  | 25d → 17d |  | constraint start no earlier than 2004-08-28 → start no earlier than 2004-09-05 |
| 23 | **Level Manager** | 2004-08-07 → 2004-08-12 A (+5d) | 2004-08-19 → 2004-08-25 A (+6d) | 12d → 13d | 0% → 100% | 37.38d → none |  |  |
| 24 | Planning | 2004-08-07 → 2004-08-12 A (+5d) | 2004-08-11 → 2004-08-16 A (+5d) |  | 0% → 100% | 37.38d → none |  | constraint start no earlier than 2004-08-07 → start no earlier than 2004-08-26 |
| 25 | Implement | 2004-08-11 → 2004-08-16 A (+5d) | 2004-08-15 → 2004-08-20 A (+5d) |  | 0% → 100% | 37.38d → none |  |  |
| 26 | Test | 2004-08-15 → 2004-08-21 A (+6d) | 2004-08-19 → 2004-08-25 A (+6d) |  | 0% → 100% | 37.38d → none |  |  |
| 31 | **Physics** |  | 2004-08-27 → 2004-09-05 (+9d) | 23.29d → 32.2d | 13% → 53% | 29.09d → 20.18d |  |  |
| 32 | Research |  | 2004-08-06 A → 2004-08-09 A (+3d) | 2d → 5d |  |  |  |  |
| 33 | Implement Forces and Movement | 2004-08-11 A → 2004-08-15 A (+4d) | 2004-08-14 → 2004-08-18 A (+4d) |  | 13% → 100% | 29.09d → none |  |  |
| 34 | Implement Collision Detection Algorithm | 2004-08-14 → 2004-08-18 A (+4d) | 2004-08-15 → 2004-08-19 A (+4d) |  | 0% → 100% | 29.09d → none |  |  |
| 35 | **Event Handler** | 2004-08-15 → 2004-08-19 A (+4d) | 2004-08-27 → 2004-09-05 (+9d) | 12d → 16.62d | 0% → 18% | 29.09d → 20.18d |  |  |
| 36 | Basic Collision Responses | 2004-08-15 → 2004-08-19 A (+4d) | 2004-08-20 → 2004-08-29 (+9d) |  | 0% → 44% | 29.09d → 20.18d |  |  |
| 37 | Advance Collision Responses | 2004-08-20 → 2004-08-29 (+9d) | 2004-08-25 → 2004-09-03 (+9d) |  |  | 29.09d → 20.18d |  |  |
| 38 | Unit Testing | 2004-08-25 → 2004-09-03 (+9d) | 2004-08-27 → 2004-09-05 (+9d) |  |  | 29.09d → 20.18d |  |  |
| 39 | **AI** | 2004-08-18 → 2004-08-23 A (+5d) |  | 23d → 18d | 0% → 3% |  |  |  |
| 40 | AI state change / basic functionality | 2004-08-18 → 2004-08-23 A (+5d) | 2004-08-23 → 2004-08-30 (+7d) |  | 0% → 8% | 25.38d → 17.75d |  | constraint start no earlier than 2004-08-18 → start no earlier than 2004-08-23 |
| 43 | **HUD** | 2004-08-14 → 2004-08-18 A (+4d) | 2004-08-29 → 2004-08-30 (+1d) | 15d → 12d | 0% → 51% | 27.38d → 26.38d |  |  |
| 44 | Basic Hud / Bitmapped Fonts | 2004-08-14 → 2004-08-18 A (+4d) | 2004-08-18 → 2004-08-25 (+7d) |  | 0% → 90% | 38.38d → 30.75d |  | constraint start no earlier than 2004-08-14 → start no earlier than 2004-08-18 |
| 45 | Hud Complete | 2004-08-25 A |  |  | 0% → 19% | 27.38d → 26.98d |  |  |
| 46 | Hud Testing | 2004-08-27 A |  |  | 0% → 30% | 27.38d → 26.38d |  |  |
| 47 | Paused HUD | 2004-08-24 → 2004-08-29 (+5d) | 2004-08-25 → 2004-08-30 (+5d) |  |  | 31.38d → 26.38d | none → 46 | constraint start no earlier than 2004-08-24 → none |
| 48 | **Menu** |  |  |  | 6% → 33% |  |  |  |
| 49 | Basic Menu |  | 2004-08-14 → 2004-08-22 A (+8d) |  | 19% → 100% | 38.38d → none |  |  |
| 52 | **Input** |  | 2004-08-11 → 2004-08-18 A (+7d) | 7d → 14d | 69% → 100% | 45.38d → none |  |  |
| 54 | Input with Action functionality |  | 2004-08-09 A |  | 67% → 100% | 45.99d → none |  |  |
| 55 | Testing Input | 2004-08-10 → 2004-08-17 A (+7d) | 2004-08-11 → 2004-08-18 A (+7d) |  | 0% → 100% | 45.38d → none |  | constraint start no earlier than 2004-08-10 → start no earlier than 2004-08-17 |
| 56 | **Content Exporter/Loader** |  | 2004-08-26 → 2004-09-03 (+8d) | 21d? → 28.67d? | 11% → 99% | 30.38d → 22.71d |  |  |
| 57 | **Geometery** | 2004-08-12 A | 2004-08-22 A |  | 0% → 100% | 34.38d → none |  |  |
| 58 | **Exporter** | 2004-08-12 A | 2004-08-22 A |  | 0% → 100% | 34.38d → none |  |  |
| 59 | Implementation | 2004-08-12 A | 2004-08-17 A |  | 0% → 100% | 39.38d → none |  |  |
| 60 | Testing | 2004-08-17 A | 2004-08-22 A |  | 0% → 100% | 34.38d → none |  |  |
| 61 | **Importer** | 2004-08-12 A | 2004-08-22 A |  | 0% → 100% | 34.38d → none |  |  |
| 62 | Implemnetation | 2004-08-12 A | 2004-08-17 A |  | 0% → 100% | 39.38d → none |  |  |
| 63 | Testing | 2004-08-17 A | 2004-08-22 A |  | 0% → 100% | 34.38d → none |  |  |
| 64 | **Animation** |  | 2004-08-26 → 2004-09-03 (+8d) | 21d? → 28.67d? | 21% → 99% | 30.38d → 22.71d |  |  |
| 65 | **Exporter** |  | 2004-08-16 → 2004-08-23 A (+7d) | 10.76d? → 18.38d? | 41% → 100% | 30.62d → none |  |  |
| 67 | Implementation | 2004-08-09 → 2004-08-17 A (+8d) | 2004-08-14 → 2004-08-21 A (+7d) |  | 0% → 100% | 30.62d → none |  | constraint finish no earlier than 2004-08-08 → start no earlier than 2004-08-17 |
| 68 | Unit Testing | 2004-08-14 → 2004-08-21 A (+7d) | 2004-08-16 → 2004-08-23 A (+7d) |  | 0% → 100% | 30.62d → none |  |  |
| 69 | **Loader** | 2004-08-16 → 2004-08-23 A (+7d) | 2004-08-26 → 2004-09-03 (+8d) | 10.24d → 10.29d | 0% → 97% | 30.38d → 22.71d |  |  |
| 70 | Research | 2004-08-16 → 2004-08-23 A (+7d) | 2004-08-19 → 2004-08-26 A (+7d) |  | 0% → 100% | 30.62d → none |  |  |
| 71 | Implementation | 2004-08-19 → 2004-08-26 A (+7d) | 2004-08-24 → 2004-09-01 (+8d) |  | 0% → 94% | 30.62d → 24.71d |  |  |
| 72 | Unit Testing | 2004-08-24 → 2004-09-01 A (+8d) | 2004-08-26 → 2004-09-03 A (+8d) |  | 0% → 100% | 30.38d → none |  |  |
| 73 | **Animation** | 2004-08-26 A |  |  | 0% → 2% |  |  |  |
| 74 | **Keyframe** | 2004-08-26 A |  |  | 0% → 3% |  |  |  |
| 75 | Research | 2004-08-26 A |  |  | 0% → 9% |  |  |  |
| 83 | **Base Objects** |  | 2004-08-12 A |  | 77% → 100% | 44d → none |  |  |
| 87 | **Pillow** |  | 2004-08-12 A |  | 67% → 100% | 44.38d → none |  |  |
| 89 | Implement | 2004-08-10 A | 2004-08-12 A |  | 0% → 100% | 44.38d → none |  |  |
| 90 | **Player** |  | 2004-08-12 A |  | 73% → 100% | 44.38d → none |  |  |
| 92 | Implement |  | 2004-08-12 A |  | 19% → 100% | 44.38d → none |  |  |
| 93 | **PowerUp** |  | 2004-08-12 A |  | 67% → 100% | 44.38d → none |  |  |
| 95 | Implement | 2004-08-10 A | 2004-08-12 A |  | 0% → 100% | 44.38d → none |  |  |
| 96 | **Game Manager** | 2004-08-20 A | 2004-08-27 A |  | 0% → 100% | 29.38d → none |  |  |
| 97 | Planning | 2004-08-20 A | 2004-08-21 A |  | 0% → 100% | 35.38d → none |  |  |
| 98 | Implement | 2004-08-21 A | 2004-08-26 → 2004-08-27 A (+1d) |  | 0% → 100% | 30d → none |  |  |
| 99 | Testing | 2004-08-26 A | 2004-08-27 A |  | 0% → 100% | 29.38d → none |  |  |
| 100 | Profiler | 2004-08-27 → 2004-08-29 A (+2d) | 2004-08-28 → 2004-08-30 (+2d) |  | 0% → 10% | 28.38d → 26.38d |  | constraint start no earlier than 2004-08-27 → start no earlier than 2004-08-29 |
| 108 | **Object Manager** | 2004-08-12 A | 2004-08-19 A |  | 0% → 100% | 37.38d → none |  |  |
| 109 | Planning | 2004-08-12 A | 2004-08-13 A |  | 0% → 100% | 43.38d → none |  |  |
| 110 | Implement | 2004-08-13 A | 2004-08-17 A |  | 0% → 100% | 39.38d → none |  |  |
| 111 | Test | 2004-08-18 A | 2004-08-19 A |  | 0% → 100% | 37.38d → none |  |  |
| 112 | **Particle** | 2004-08-27 → 2004-08-20 A (-7d) | 2004-09-01 → 2004-08-31 (-1d) | 5d → 11.62d | 0% → 73% | 24.38d → 24.75d |  |  |
| 113 | Research | 2004-08-27 → 2004-08-20 A (-7d) | 2004-08-29 → 2004-08-22 A (-7d) |  | 0% → 100% | 27.38d → none |  | constraint start no earlier than 2004-08-27 → start no earlier than 2004-08-24 |

| ID | Task | Start | Finish | Duration | Complete | Total float | Other |
| --- | --- | --- | --- | --- | --- | --- | --- |
| 114 | Planning | 2004-08-27 → 2004-08-22 A (-5d) | 2004-08-29 → 2004-08-24 A (-5d) |  | 0% → 100% | 27.38d → none |  |
| 115 | Implement | 2004-08-30 → 2004-08-24 A (-6d) | 2004-09-01 → 2004-08-31 (-1d) |  | 0% → 19% | 24.38d → 24.75d | constraint start no earlier than 2004-08-30 → start no earlier than 2004-08-24 |
| 119 | **Assets** | 2004-06-30 → 2004-08-14 (+45d) | 2004-08-23 → 2004-08-30 (+7d) | 54d → 16d |  | 33.38d → 26.38d |  |
| 120 | **2D ART** | 2004-08-10 → 2004-08-14 (+4d) |  | 11d → 7d |  |  |  |
| 121 | **Menu** | 2004-08-13 → 2004-08-17 (+4d) | 2004-08-13 → 2004-08-19 (+6d) | 0d → 2d |  | 43.38d → 37.38d |  |
| 122 | **Front End Menu** | 2004-08-13 → 2004-08-17 (+4d) | 2004-08-13 → 2004-08-19 (+6d) | 0d → 2d |  | 43.38d → 37.38d |  |
| 123 | Mini picture of each level | 2004-08-13 → 2004-08-17 (+4d) | 2004-08-13 → 2004-08-17 (+4d) |  |  | 43.38d → 39.38d | constraint start no earlier than 2004-08-13 → start no earlier than 2004-08-17 |
| 124 | 2 pillow picturees (fluffed/squished) | 2004-08-13 → 2004-08-18 (+5d) | 2004-08-13 → 2004-08-18 (+5d) |  |  | 43.38d → 38.38d | constraint start no earlier than 2004-08-13 → start no earlier than 2004-08-18 |
| 125 | Picture of Josie And Sally Fighting | 2004-08-13 → 2004-08-18 (+5d) | 2004-08-13 → 2004-08-18 (+5d) |  |  | 43.38d → 38.38d | constraint start no earlier than 2004-08-13 → start no earlier than 2004-08-18 |
| 126 | BackGround of Level/Character Select | 2004-08-13 → 2004-08-19 (+6d) | 2004-08-13 → 2004-08-19 (+6d) |  |  | 43.38d → 37.38d | constraint start no earlier than 2004-08-13 → start no earlier than 2004-08-19 |
| 127 | BackGround picture of Rubber Ducky | 2004-08-13 → 2004-08-19 (+6d) | 2004-08-13 → 2004-08-19 (+6d) |  |  | 43.38d → 37.38d | constraint start no earlier than 2004-08-13 → start no earlier than 2004-08-19 |
| 128 | **HUD** | 2004-08-10 → 2004-08-14 (+4d) | 2004-08-12 → 2004-08-18 (+6d) | 2d → 4d |  | 44.38d → 38.38d |  |
| 129 | Picture of Characters | 2004-08-12 → 2004-08-14 (+2d) | 2004-08-12 → 2004-08-14 (+2d) |  |  | 44.38d → 42.38d | constraint start no earlier than 2004-08-12 → start no earlier than 2004-08-14 |
| 130 | Fonts | 2004-08-10 → 2004-08-18 (+8d) | 2004-08-10 → 2004-08-18 (+8d) |  |  | 46.38d → 38.38d | constraint start no earlier than 2004-08-10 → start no earlier than 2004-08-18 |
| 138 | **3D ART** |  | 2004-08-23 → 2004-08-25 (+2d) | 6d → 8d |  | 33.38d → 31.38d |  |
| 139 | **Level Objects** |  | 2004-08-21 → 2004-08-25 (+4d) | 3d → 7d |  | 35.38d → 31.38d |  |
| 144 | Bar of Soap | 2004-08-21 → 2004-08-22 (+1d) | 2004-08-21 → 2004-08-22 (+1d) |  |  | 35.38d → 34.38d | constraint start no earlier than 2004-08-21 → start no earlier than 2004-08-22 |
| 145 | Faucet | 2004-08-21 → 2004-08-23 (+2d) | 2004-08-21 → 2004-08-23 (+2d) |  |  | 35.38d → 33.38d | constraint start no earlier than 2004-08-21 → start no earlier than 2004-08-23 |
| 146 | Water Gun Barrel | 2004-08-21 → 2004-08-24 (+3d) | 2004-08-21 → 2004-08-24 (+3d) |  |  | 35.38d → 32.38d | constraint start no earlier than 2004-08-21 → start no earlier than 2004-08-24 |
| 147 | Faucet Handles | 2004-08-21 → 2004-08-25 (+4d) | 2004-08-21 → 2004-08-25 (+4d) |  |  | 35.38d → 31.38d | constraint start no earlier than 2004-08-21 → start no earlier than 2004-08-25 |
| 148 | **Power Ups** |  | 2004-08-20 → 2004-08-25 (+5d) | 3d → 8d |  | 36.38d → 31.38d |  |
| 150 | Pineapple | 2004-08-20 → 2004-08-21 (+1d) | 2004-08-20 → 2004-08-21 (+1d) |  |  | 36.38d → 35.38d | constraint start no earlier than 2004-08-20 → start no earlier than 2004-08-21 |
| 151 | Grapes | 2004-08-20 → 2004-08-22 (+2d) | 2004-08-20 → 2004-08-22 (+2d) |  |  | 36.38d → 34.38d | constraint start no earlier than 2004-08-20 → start no earlier than 2004-08-22 |
| 152 | Ice Cream Cone | 2004-08-20 → 2004-08-23 (+3d) | 2004-08-20 → 2004-08-23 (+3d) |  |  | 36.38d → 33.38d | constraint start no earlier than 2004-08-20 → start no earlier than 2004-08-23 |
| 153 | Blueberry Pie | 2004-08-20 → 2004-08-24 (+4d) | 2004-08-20 → 2004-08-24 (+4d) |  |  | 36.38d → 32.38d | constraint start no earlier than 2004-08-20 → start no earlier than 2004-08-24 |
| 154 | Whole Turkey | 2004-08-20 → 2004-08-25 (+5d) | 2004-08-20 → 2004-08-25 (+5d) |  |  | 36.38d → 31.38d | constraint start no earlier than 2004-08-20 → start no earlier than 2004-08-25 |
| 160 | **Sound** | 2004-08-16 → 2004-08-19 (+3d) | 2004-08-16 → 2004-08-27 (+11d) | 0d → 8d |  | 40.38d → 29.38d |  |
| 161 | **Sound FX** | 2004-08-16 → 2004-08-19 (+3d) | 2004-08-16 → 2004-08-26 (+10d) | 0d → 7d |  | 40.38d → 30.38d |  |
| 162 | Wave/Ocean Noise | 2004-08-16 → 2004-08-19 (+3d) | 2004-08-16 → 2004-08-19 (+3d) |  |  | 40.38d → 37.38d | constraint start no earlier than 2004-08-16 → start no earlier than 2004-08-19 |
| 163 | Wood creaking | 2004-08-16 → 2004-08-19 (+3d) | 2004-08-16 → 2004-08-19 (+3d) |  |  | 40.38d → 37.38d | constraint start no earlier than 2004-08-16 → start no earlier than 2004-08-19 |
| 164 | Sail/Flag in the win | 2004-08-16 → 2004-08-19 (+3d) | 2004-08-16 → 2004-08-19 (+3d) |  |  | 40.38d → 37.38d | constraint start no earlier than 2004-08-16 → start no earlier than 2004-08-19 |
| 165 | Blow Hole Sound (geyser) | 2004-08-16 → 2004-08-19 (+3d) | 2004-08-16 → 2004-08-19 (+3d) |  |  | 40.38d → 37.38d | constraint start no earlier than 2004-08-16 → start no earlier than 2004-08-19 |
| 166 | Cannon Firing Sound | 2004-08-16 → 2004-08-20 (+4d) | 2004-08-16 → 2004-08-20 (+4d) |  |  | 40.38d → 36.38d | constraint start no earlier than 2004-08-16 → start no earlier than 2004-08-20 |
| 167 | Body hitting wood (clunk) | 2004-08-16 → 2004-08-20 (+4d) | 2004-08-16 → 2004-08-20 (+4d) |  |  | 40.38d → 36.38d | constraint start no earlier than 2004-08-16 → start no earlier than 2004-08-20 |
| 168 | a "ker-plunk" sound…body falling in water | 2004-08-16 → 2004-08-21 (+5d) | 2004-08-16 → 2004-08-21 (+5d) |  |  | 40.38d → 35.38d | constraint start no earlier than 2004-08-16 → start no earlier than 2004-08-21 |
| 169 | water running | 2004-08-16 → 2004-08-23 (+7d) | 2004-08-16 → 2004-08-23 (+7d) |  |  | 40.38d → 33.38d | constraint start no earlier than 2004-08-16 → start no earlier than 2004-08-23 |
| 170 | rubber ducky squeak | 2004-08-16 → 2004-08-23 (+7d) | 2004-08-16 → 2004-08-23 (+7d) |  |  | 40.38d → 33.38d | constraint start no earlier than 2004-08-16 → start no earlier than 2004-08-23 |
| 171 | Bubble sounds (popping) | 2004-08-16 → 2004-08-24 (+8d) | 2004-08-16 → 2004-08-24 (+8d) |  |  | 40.38d → 32.38d | constraint start no earlier than 2004-08-16 → start no earlier than 2004-08-24 |
| 172 | Squirt Gun Noise | 2004-08-16 → 2004-08-24 (+8d) | 2004-08-16 → 2004-08-24 (+8d) |  |  | 40.38d → 32.38d | constraint start no earlier than 2004-08-16 → start no earlier than 2004-08-24 |
| 173 | Quacking noise | 2004-08-16 → 2004-08-25 (+9d) | 2004-08-16 → 2004-08-25 (+9d) |  |  | 40.38d → 31.38d | constraint start no earlier than 2004-08-16 → start no earlier than 2004-08-25 |
| 174 | Soft Pillow sound (pillow impact on body) | 2004-08-16 → 2004-08-25 (+9d) | 2004-08-16 → 2004-08-25 (+9d) |  |  | 40.38d → 31.38d | constraint start no earlier than 2004-08-16 → start no earlier than 2004-08-25 |
| 175 | Hard Pillow Sound | 2004-08-16 → 2004-08-25 (+9d) | 2004-08-16 → 2004-08-25 (+9d) |  |  | 40.38d → 31.38d | constraint start no earlier than 2004-08-16 → start no earlier than 2004-08-25 |
| 176 | Item Pick Sound (bling, clink clink) | 2004-08-16 → 2004-08-26 (+10d) | 2004-08-16 → 2004-08-26 (+10d) |  |  | 40.38d → 30.38d | constraint start no earlier than 2004-08-16 → start no earlier than 2004-08-26 |
| 177 | Item Hitting bodd (splat sound) | 2004-08-16 → 2004-08-26 (+10d) | 2004-08-16 → 2004-08-26 (+10d) |  |  | 40.38d → 30.38d | constraint start no earlier than 2004-08-16 → start no earlier than 2004-08-26 |
| 178 | Powerup sound FX(REV noise) | 2004-08-16 → 2004-08-26 (+10d) | 2004-08-16 → 2004-08-26 (+10d) |  |  | 40.38d → 30.38d | constraint start no earlier than 2004-08-16 → start no earlier than 2004-08-26 |
| 179 | **Music** | 2004-08-16 → 2004-08-22 (+6d) | 2004-08-16 → 2004-08-27 (+11d) | 0d → 5d |  | 40.38d → 29.38d |  |
| 180 | Menu Loop | 2004-08-16 → 2004-08-22 (+6d) | 2004-08-16 → 2004-08-22 (+6d) |  |  | 40.38d → 34.38d | constraint start no earlier than 2004-08-16 → start no earlier than 2004-08-22 |
| 181 | Credit Loop | 2004-08-16 → 2004-08-23 (+7d) | 2004-08-16 → 2004-08-23 (+7d) |  |  | 40.38d → 33.38d | constraint start no earlier than 2004-08-16 → start no earlier than 2004-08-23 |
| 182 | Pirate Board loop | 2004-08-16 → 2004-08-25 (+9d) | 2004-08-16 → 2004-08-25 (+9d) |  |  | 40.38d → 31.38d | constraint start no earlier than 2004-08-16 → start no earlier than 2004-08-25 |
| 183 | Bathtub Board Loop | 2004-08-16 → 2004-08-27 (+11d) | 2004-08-16 → 2004-08-27 (+11d) |  |  | 40.38d → 29.38d | constraint start no earlier than 2004-08-16 → start no earlier than 2004-08-27 |
| 184 | **Voice Dialogue** | 2004-06-30 → 2004-08-30 (+61d) | 2004-06-30 → 2004-08-30 (+61d) |  |  | 87.38d → 26.38d |  |
| 185 | Josie | 2004-06-30 → 2004-08-30 (+61d) | 2004-06-30 → 2004-08-30 (+61d) |  |  | 87.38d → 26.38d | constraint none → start no earlier than 2004-08-30 |
| 186 | Captain Sally | 2004-06-30 → 2004-08-30 (+61d) | 2004-06-30 → 2004-08-30 (+61d) |  |  | 87.38d → 26.38d | constraint none → start no earlier than 2004-08-30 |
